# Tailspin Remote Drone

How a schedule from MS Project changed from version to version. A marks actual dates.

## Version 1 (data date 2019-01-18, saved 2025-03-19, file Tailspin Remote Drone 9M.mpp)

| ID | WBS | Task | Duration | Start | Finish | Predecessors | Complete | Total float | Constraint |
| --- | --- | --- | --- | --- | --- | --- | --- | --- | --- |
| 1 | 1 | **Target Market Research and Analysis** | 29.62d | 2019-01-07 08:00 A | 2019-02-18 14:00 |  | 39% | 67.42d |  |
| 2 | 1.1 | **Research** | 29.62d | 2019-01-07 08:00 A | 2019-02-18 14:00 |  | 56% | 67.42d |  |
| 3 |  | Research begins | 0d | 2019-01-07 08:00 A | 2019-01-07 08:00 A |  | 100% |  |  |
| 4 | 1.1.2 | **Surveys** | 8d | 2019-01-07 08:00 A | 2019-01-16 19:00 A |  | 100% |  |  |
| 5 |  | Develop survey questionnaire | 2.24d | 2019-01-07 08:00 A | 2019-01-08 16:56 A | 3 | 100% |  |  |
| 6 |  | Review and approval of survey | 1h | 2019-01-08 16:56 A | 2019-01-09 08:56 A | 5 | 100% |  |  |
| 7 |  | Conduct survey | 1.2w | 2019-01-09 10:00 A | 2019-01-16 19:00 A | 6 | 100% |  |  |
| 8 | 1.1.3 | **Focus Groups** | 11.88d | 2019-01-09 08:56 A | 2019-01-25 17:00 A |  | 100% |  |  |
| 9 |  | Identify focus group member demographics | 1d | 2019-01-09 08:56 A | 2019-01-10 08:56 A | 6 | 100% |  |  |
| 10 |  | Contact potential focus group members | 5.12d | 2019-01-10 08:56 A | 2019-01-17 09:56 A | 9 | 100% |  |  |
| 11 |  | Conduct focus groups | 1w | 2019-01-14 08:00 A | 2019-01-25 17:00 A | 10 | 100% |  | start no later than 2019-01-14 08:00 |
| 12 | 1.1.4 | **Observations** | 15.62d | 2019-01-28 08:00 A | 2019-02-18 14:00 |  | 2% | 1d |  |
| 13 |  | Identify observation parameters | 4h | 2019-01-28 08:00 A | 2019-01-28 12:00 | 11 | 50% | 1d |  |
| 14 |  | Select observation locations | 1h | 2019-01-28 13:00 | 2019-01-28 14:00 | 13 |  | 1d |  |
| 15 |  | Conduct observations | 3w | 2019-01-28 14:00 | 2019-02-18 14:00 | 14 |  | 1d |  |
| 16 |  | Research complete | 0d | 2019-02-18 14:00 | 2019-02-18 14:00 | 15 |  | 67.42d |  |
| 17 | 1.2 | **Analysis** | 13.75d | 2019-01-28 14:00 | 2019-02-15 11:00 |  |  | 1d |  |
| 18 |  | Analysis begins | 0d | 2019-01-28 14:00 | 2019-01-28 14:00 | 15SS |  | 1d |  |
| 19 | 1.2.2 | **Analysis of Research Data** | 7.75d | 2019-01-28 14:00 | 2019-02-07 11:00 |  |  | 1d |  |
| 20 |  | Analyze surveys, focus groups, and observations | 2.12d | 2019-01-28 14:00 | 2019-01-30 10:00 | 18 |  | 1d |  |
| 21 |  | Create follow up actions for secondary research | 1d | 2019-01-30 10:00 | 2019-01-31 10:00 | 20 |  | 1d |  |
| 22 |  | Conduct secondary research | 1.02w | 2019-01-31 10:00 | 2019-02-07 11:00 | 21 |  | 1d |  |
| 23 | 1.2.3 | **Report of Research Findings** | 7d | 2019-02-06 11:00 | 2019-02-15 11:00 |  |  | 1d |  |
| 24 |  | Compile draft copy of report | 8h | 2019-02-06 11:00 | 2019-02-07 11:00 | 22FF |  | 1d |  |
| 25 |  | Draft copy review period | 5d | 2019-02-07 11:00 | 2019-02-14 11:00 | 24 |  | 1d |  |
| 26 |  | Review comments and compile final report | 1d | 2019-02-14 11:00 | 2019-02-15 11:00 | 25 |  | 1d |  |
| 27 |  | Analysis complete | 0d | 2019-02-15 11:00 | 2019-02-15 11:00 | 26 |  | 1d |  |
| 28 | 2 | **Design** | 14.5d | 2019-02-15 11:00 | 2019-03-07 16:00 |  |  | 1d |  |
| 29 |  | Design begins | 0d | 2019-02-15 11:00 | 2019-02-15 11:00 | 27 |  | 1d |  |
| 30 |  | Research Findings Evaluation | 2d | 2019-02-15 11:00 | 2019-02-19 14:00 | 29 |  | 1d |  |
| 31 |  | Design Document | 2d | 2019-02-19 14:00 | 2019-02-21 14:00 | 30 |  | 1d |  |
| 32 |  | Proof of Concept | 2w | 2019-02-21 14:00 | 2019-03-07 14:00 | 31 |  | 1d |  |
| 33 |  | Final Design Selection | 2h | 2019-03-07 14:00 | 2019-03-07 16:00 | 32 |  | 1d |  |
| 34 |  | Design complete | 0d | 2019-03-07 16:00 | 2019-03-07 16:00 | 33 |  | 1d |  |
| 35 | 3 | **Product Development** | 27.5d | 2019-03-07 16:00 | 2019-04-16 11:00 |  |  | 0d |  |
| 36 |  | Product development begins | 0d | 2019-03-07 16:00 | 2019-03-07 16:00 | 34 |  | 1d |  |
| 37 |  | Initial Prototype | 1.02w | 2019-03-07 16:00 | 2019-03-14 17:00 | 36 |  | 1d |  |
| 38 |  | Internal Testing | 2w | 2019-03-18 08:00 | 2019-03-29 17:00 | 37 |  | 0d | start no earlier than 2019-03-18 08:00 |
| 39 |  | Raw Materials List | 9h | 2019-04-01 08:00 | 2019-04-02 09:00 | 38 |  | 0d |  |
| 40 |  | Parts Designation | 2.05w | 2019-04-02 09:00 | 2019-04-16 11:00 | 39 |  | 0d |  |
| 41 |  | Product development complete | 0d | 2019-04-16 11:00 | 2019-04-16 11:00 | 40 |  | 0d |  |
| 42 | 4 | **Production Planning** | 9.38d | 2019-04-16 11:00 | 2019-04-29 15:00 |  |  | 0d |  |
| 43 |  | Production planning begins | 0d | 2019-04-16 11:00 | 2019-04-16 11:00 | 41 |  | 0d |  |
| 44 |  | High-level Production Plan | 5.12d | 2019-04-16 11:00 | 2019-04-23 12:00 | 43 |  | 0d |  |
| 45 |  | Resource Planning | 3d | 2019-04-23 13:00 | 2019-04-26 12:00 | 44 |  | 0d |  |
| 46 |  | Quality Control Design | 1d | 2019-04-26 13:00 | 2019-04-29 12:00 | 45 |  | 0d |  |
| 47 |  | Final Production Plan Approval | 2h | 2019-04-29 13:00 | 2019-04-29 15:00 | 46 |  | 0d |  |
| 48 |  | Production planning complete | 0d | 2019-04-29 15:00 | 2019-04-29 15:00 | 47 |  | 0d |  |
| 49 | 5 | **Marketing** | 17.3d | 2019-04-29 15:00 | 2019-05-23 08:24 |  |  | 0d |  |
| 50 |  | Marketing phase begins | 0d | 2019-04-29 15:00 | 2019-04-29 15:00 | 48 |  | 0d |  |
| 51 |  | Marketing Strategy Development | 1.18d | 2019-04-29 15:00 | 2019-04-30 14:24 | 50 |  | 0d |  |
| 52 |  | Marketing Plan Development and Approval | 1d | 2019-04-30 14:24 | 2019-05-01 14:24 | 51 |  | 0d |  |
| 53 |  | Marketing Materials | 3.08w | 2019-05-01 14:24 | 2019-05-23 08:24 | 52 |  | 0d |  |
| 54 |  | Marketing phase complete | 0d | 2019-05-23 08:24 | 2019-05-23 08:24 | 53 |  | 0d |  |
| 55 | 6 | **Project Management** | 94.12d | 2019-01-07 08:00 A | 2019-05-20 09:00 |  | 10% | 2.92d |  |
| 56 | 6.1 | **Status Meeting** | 94.12d | 2019-01-07 08:00 A | 2019-05-20 09:00 |  | 10% | 2.92d |  |
| 57 |  | Status Meeting 1 | 1h | 2019-01-07 08:00 A | 2019-01-07 09:00 A |  | 100% |  | start no earlier than 2019-01-07 08:00 |
| 58 |  | Status Meeting 2 | 1h | 2019-01-14 08:00 A | 2019-01-14 09:00 A |  | 100% |  | start no earlier than 2019-01-14 08:00 |
| 59 |  | Status Meeting 3 | 1h | 2019-01-22 08:00 | 2019-01-22 09:00 |  |  | 86.92d | start no earlier than 2019-01-21 08:00 |
| 60 |  | Status Meeting 4 | 1h | 2019-01-28 08:00 | 2019-01-28 09:00 |  |  | 82.92d | start no earlier than 2019-01-28 08:00 |
| 61 |  | Status Meeting 5 | 1h | 2019-02-04 08:00 | 2019-02-04 09:00 |  |  | 77.92d | start no earlier than 2019-02-04 08:00 |
| 62 |  | Status Meeting 6 | 1h | 2019-02-11 08:00 | 2019-02-11 09:00 |  |  | 72.92d | start no earlier than 2019-02-11 08:00 |
| 63 |  | Status Meeting 7 | 1h | 2019-02-18 08:00 | 2019-02-18 09:00 |  |  | 67.92d | start no earlier than 2019-02-18 08:00 |
| 64 |  | Status Meeting 8 | 1h | 2019-02-25 08:00 | 2019-02-25 09:00 |  |  | 62.92d | start no earlier than 2019-02-25 08:00 |
| 65 |  | Status Meeting 9 | 1h | 2019-03-04 08:00 | 2019-03-04 09:00 |  |  | 57.92d | start no earlier than 2019-03-04 08:00 |
| 66 |  | Status Meeting 10 | 1h | 2019-03-11 08:00 | 2019-03-11 09:00 |  |  | 52.92d | start no earlier than 2019-03-11 08:00 |
| 67 |  | Status Meeting 11 | 1h | 2019-03-18 08:00 | 2019-03-18 09:00 |  |  | 47.92d | start no earlier than 2019-03-18 08:00 |
| 68 |  | Status Meeting 12 | 1h | 2019-03-25 08:00 | 2019-03-25 09:00 |  |  | 42.92d | start no earlier than 2019-03-25 08:00 |
| 69 |  | Status Meeting 13 | 1h | 2019-04-01 08:00 | 2019-04-01 09:00 |  |  | 37.92d | start no earlier than 2019-04-01 08:00 |
| 70 |  | Status Meeting 14 | 1h | 2019-04-08 08:00 | 2019-04-08 09:00 |  |  | 32.92d | start no earlier than 2019-04-08 08:00 |

| ID | Task | Duration | Start | Finish | Total float | Constraint |
| --- | --- | --- | --- | --- | --- | --- |
| 71 | Status Meeting 15 | 1h | 2019-04-15 08:00 | 2019-04-15 09:00 | 27.93d | start no earlier than 2019-04-15 08:00 |
| 72 | Status Meeting 16 | 1h | 2019-04-22 08:00 | 2019-04-22 09:00 | 22.93d | start no earlier than 2019-04-22 08:00 |
| 73 | Status Meeting 17 | 1h | 2019-04-29 08:00 | 2019-04-29 09:00 | 17.93d | start no earlier than 2019-04-29 08:00 |
| 74 | Status Meeting 18 | 1h | 2019-05-06 08:00 | 2019-05-06 09:00 | 12.93d | start no earlier than 2019-05-06 08:00 |
| 75 | Status Meeting 19 | 1h | 2019-05-13 08:00 | 2019-05-13 09:00 | 7.92d | start no earlier than 2019-05-13 08:00 |
| 76 | Status Meeting 20 | 1h | 2019-05-20 08:00 | 2019-05-20 09:00 | 2.92d | start no earlier than 2019-05-20 08:00 |

## Version 2 (data date 2019-01-18, saved 2025-03-19, file Tailspin Remote Drone 9MA.mpp)

Last finish 2019-05-23 → 2019-05-24 (+1d).

Changed:

| ID | Task | Start | Finish | Duration | Complete | Total float |
| --- | --- | --- | --- | --- | --- | --- |
| 1 | **Target Market Research and Analysis** |  | 2019-02-18 14:00 → 2019-02-20 10:00 (+2d) | 29.62d → 31.25d | 39% → 36% | 67.42d → 67.67d |
| 2 | **Research** |  | 2019-02-18 14:00 → 2019-02-18 15:00 | 29.62d → 29.75d |  | 67.42d → 69.17d |
| 12 | **Observations** |  | 2019-02-18 14:00 → 2019-02-18 15:00 | 15.62d → 15.75d |  | 1d → -1.75d |
| 14 | Select observation locations |  | 2019-01-28 14:00 → 2019-01-28 15:00 | 1h → 2h |  | 1d → -1.75d |
| 15 | Conduct observations | 2019-01-28 14:00 → 2019-01-28 15:00 | 2019-02-18 14:00 → 2019-02-18 15:00 |  |  | 1d → -1.75d |
| 16 | Research complete | 2019-02-18 14:00 → 2019-02-18 15:00 | 2019-02-18 14:00 → 2019-02-18 15:00 |  |  | 67.42d → 69.17d |
| 17 | **Analysis** | 2019-01-28 14:00 → 2019-01-28 15:00 | 2019-02-15 11:00 → 2019-02-20 10:00 (+5d) | 13.75d → 16.5d |  | 1d → -1.75d |
| 18 | Analysis begins | 2019-01-28 14:00 → 2019-01-28 15:00 | 2019-01-28 14:00 → 2019-01-28 15:00 |  |  | 1d → -1.75d |
| 19 | **Analysis of Research Data** | 2019-01-28 14:00 → 2019-01-28 15:00 | 2019-02-07 11:00 → 2019-02-12 10:00 (+5d) | 7.75d → 10.5d |  | 1d → -1.75d |
| 20 | Analyze surveys, focus groups, and observations | 2019-01-28 14:00 → 2019-01-28 15:00 | 2019-01-30 10:00 → 2019-01-31 10:00 (+1d) | 2.12d → 3d |  | 1d → -1.75d |
| 21 | Create follow up actions for secondary research | 2019-01-30 10:00 → 2019-01-31 10:00 (+1d) | 2019-01-31 10:00 → 2019-02-01 10:00 (+1d) |  |  | 1d → -1.75d |
| 22 | Conduct secondary research | 2019-01-31 10:00 → 2019-02-01 10:00 (+1d) | 2019-02-07 11:00 → 2019-02-12 10:00 (+5d) | 1.02w → 7d |  | 1d → -1.75d |
| 23 | **Report of Research Findings** | 2019-02-06 11:00 → 2019-02-08 10:00 (+2d) | 2019-02-15 11:00 → 2019-02-20 10:00 (+5d) | 7d → 8d |  | 1d → -1.75d |
| 24 | Compile draft copy of report | 2019-02-06 11:00 → 2019-02-08 10:00 (+2d) | 2019-02-07 11:00 → 2019-02-12 10:00 (+5d) | 8h → 16h |  | 1d → -1.75d |
| 25 | Draft copy review period | 2019-02-07 11:00 → 2019-02-12 10:00 (+5d) | 2019-02-14 11:00 → 2019-02-19 10:00 (+5d) |  |  | 1d → -1.75d |
| 26 | Review comments and compile final report | 2019-02-14 11:00 → 2019-02-19 10:00 (+5d) | 2019-02-15 11:00 → 2019-02-20 10:00 (+5d) |  |  | 1d → -1.75d |
| 27 | Analysis complete | 2019-02-15 11:00 → 2019-02-20 10:00 (+5d) | 2019-02-15 11:00 → 2019-02-20 10:00 (+5d) |  |  | 1d → -1.75d |
| 28 | **Design** | 2019-02-15 11:00 → 2019-02-20 10:00 (+5d) | 2019-03-07 16:00 → 2019-03-12 15:00 (+5d) |  |  | 1d → -1.75d |
| 29 | Design begins | 2019-02-15 11:00 → 2019-02-20 10:00 (+5d) | 2019-02-15 11:00 → 2019-02-20 10:00 (+5d) |  |  | 1d → -1.75d |
| 30 | Research Findings Evaluation | 2019-02-15 11:00 → 2019-02-20 10:00 (+5d) | 2019-02-19 14:00 → 2019-02-22 12:00 (+3d) |  |  | 1d → -1.75d |
| 31 | Design Document | 2019-02-19 14:00 → 2019-02-22 13:00 (+3d) | 2019-02-21 14:00 → 2019-02-26 12:00 (+5d) |  |  | 1d → -1.75d |
| 32 | Proof of Concept | 2019-02-21 14:00 → 2019-02-26 13:00 (+5d) | 2019-03-07 14:00 → 2019-03-12 12:00 (+5d) |  |  | 1d → -1.75d |
| 33 | Final Design Selection | 2019-03-07 14:00 → 2019-03-12 13:00 (+5d) | 2019-03-07 16:00 → 2019-03-12 15:00 (+5d) |  |  | 1d → -1.75d |
| 34 | Design complete | 2019-03-07 16:00 → 2019-03-12 15:00 (+5d) | 2019-03-07 16:00 → 2019-03-12 15:00 (+5d) |  |  | 1d → -1.75d |
| 35 | **Product Development** | 2019-03-07 16:00 → 2019-03-12 15:00 (+5d) | 2019-04-16 11:00 → 2019-04-18 10:00 (+2d) | 27.5d → 26.5d |  | 0d → -0.62d |
| 36 | Product development begins | 2019-03-07 16:00 → 2019-03-12 15:00 (+5d) | 2019-03-07 16:00 → 2019-03-12 15:00 (+5d) |  |  | 1d → -0.62d |
| 37 | Initial Prototype | 2019-03-07 16:00 → 2019-03-12 15:00 (+5d) | 2019-03-14 17:00 → 2019-03-19 16:00 (+5d) |  |  | 1d → -0.62d |
| 38 | Internal Testing | 2019-03-18 08:00 → 2019-03-19 16:00 (+1d) | 2019-03-29 17:00 → 2019-04-02 16:00 (+4d) |  |  | 0d → -0.62d |
| 39 | Raw Materials List | 2019-04-01 08:00 → 2019-04-02 16:00 (+1d) | 2019-04-02 09:00 → 2019-04-03 17:00 (+1d) |  |  | 0d → -0.62d |
| 40 | Parts Designation | 2019-04-02 09:00 → 2019-04-04 08:00 (+2d) | 2019-04-16 11:00 → 2019-04-18 10:00 (+2d) |  |  | 0d → -0.62d |
| 41 | Product development complete | 2019-04-16 11:00 → 2019-04-18 10:00 (+2d) | 2019-04-16 11:00 → 2019-04-18 10:00 (+2d) |  |  | 0d → -0.62d |
| 42 | **Production Planning** | 2019-04-16 11:00 → 2019-04-18 10:00 (+2d) | 2019-04-29 15:00 → 2019-05-01 14:00 (+2d) |  |  | 0d → -0.62d |
| 43 | Production planning begins | 2019-04-16 11:00 → 2019-04-18 10:00 (+2d) | 2019-04-16 11:00 → 2019-04-18 10:00 (+2d) |  |  | 0d → -0.62d |
| 44 | High-level Production Plan | 2019-04-16 11:00 → 2019-04-18 10:00 (+2d) | 2019-04-23 12:00 → 2019-04-25 11:00 (+2d) |  |  | 0d → -0.62d |
| 45 | Resource Planning | 2019-04-23 13:00 → 2019-04-25 11:00 (+2d) | 2019-04-26 12:00 → 2019-04-30 11:00 (+4d) |  |  | 0d → -0.62d |
| 46 | Quality Control Design | 2019-04-26 13:00 → 2019-04-30 11:00 (+4d) | 2019-04-29 12:00 → 2019-05-01 11:00 (+2d) |  |  | 0d → -0.62d |
| 47 | Final Production Plan Approval | 2019-04-29 13:00 → 2019-05-01 11:00 (+2d) | 2019-04-29 15:00 → 2019-05-01 14:00 (+2d) |  |  | 0d → -0.62d |
| 48 | Production planning complete | 2019-04-29 15:00 → 2019-05-01 14:00 (+2d) | 2019-04-29 15:00 → 2019-05-01 14:00 (+2d) |  |  | 0d → -0.62d |
| 49 | **Marketing** | 2019-04-29 15:00 → 2019-05-01 14:00 (+2d) | 2019-05-23 08:24 → 2019-05-24 16:24 (+1d) |  |  |  |
| 50 | Marketing phase begins | 2019-04-29 15:00 → 2019-05-01 14:00 (+2d) | 2019-04-29 15:00 → 2019-05-01 14:00 (+2d) |  |  |  |
| 51 | Marketing Strategy Development | 2019-04-29 15:00 → 2019-05-01 14:00 (+2d) | 2019-04-30 14:24 → 2019-05-02 13:24 (+2d) |  |  |  |
| 52 | Marketing Plan Development and Approval | 2019-04-30 14:24 → 2019-05-02 13:24 (+2d) | 2019-05-01 14:24 → 2019-05-03 13:24 (+2d) |  |  |  |
| 53 | Marketing Materials | 2019-05-01 14:24 → 2019-05-03 13:24 (+2d) | 2019-05-23 08:24 → 2019-05-24 16:24 (+1d) |  |  |  |
| 54 | Marketing phase complete | 2019-05-23 08:24 → 2019-05-24 16:24 (+1d) | 2019-05-23 08:24 → 2019-05-24 16:24 (+1d) |  |  |  |

## Version 3 (data date 2019-01-18, saved 2025-03-19, file Tailspin Remote Drone 9B.mpp)

Last finish 2019-05-24 → 2019-05-29 (+5d). Complete tasks 9 → 23.

Changed:

| ID | Task | Start | Finish | Duration | Complete | Total float | Other |
| --- | --- | --- | --- | --- | --- | --- | --- |
| 1 | **Target Market Research and Analysis** |  | 2019-02-20 10:00 A |  | 36% → 100% | 67.67d → none |  |
| 2 | **Research** |  | 2019-02-18 15:00 A |  | 56% → 100% | 69.17d → none |  |
| 12 | **Observations** |  | 2019-02-18 15:00 A |  | 2% → 100% | -1.75d → none |  |
| 13 | Identify observation parameters |  | 2019-01-28 12:00 A |  | 50% → 100% | -1.75d → none |  |
| 14 | Select observation locations | 2019-01-28 13:00 A | 2019-01-28 15:00 A |  | 0% → 100% | -1.75d → none |  |
| 15 | Conduct observations | 2019-01-28 15:00 A | 2019-02-18 15:00 A |  | 0% → 100% | -1.75d → none |  |
| 16 | Research complete | 2019-02-18 15:00 A | 2019-02-18 15:00 A |  | 0% → 100% | 69.17d → none |  |
| 17 | **Analysis** | 2019-01-28 15:00 A | 2019-02-20 10:00 A |  | 0% → 100% | -1.75d → none |  |
| 18 | Analysis begins | 2019-01-28 15:00 A | 2019-01-28 15:00 A |  | 0% → 100% | -1.75d → none |  |
| 19 | **Analysis of Research Data** | 2019-01-28 15:00 A | 2019-02-12 10:00 A |  | 0% → 100% | -1.75d → none |  |
| 20 | Analyze surveys, focus groups, and observations | 2019-01-28 15:00 A | 2019-01-31 10:00 A |  | 0% → 100% | -1.75d → none |  |
| 21 | Create follow up actions for secondary research | 2019-01-31 10:00 A | 2019-02-01 10:00 A |  | 0% → 100% | -1.75d → none |  |
| 22 | Conduct secondary research | 2019-02-01 10:00 A | 2019-02-12 10:00 A |  | 0% → 100% | -1.75d → none |  |
| 23 | **Report of Research Findings** | 2019-02-08 10:00 A | 2019-02-20 10:00 A |  | 0% → 100% | -1.75d → none |  |
| 24 | Compile draft copy of report | 2019-02-08 10:00 A | 2019-02-12 10:00 A |  | 0% → 100% | -1.75d → none |  |
| 25 | Draft copy review period | 2019-02-12 10:00 A | 2019-02-19 10:00 A |  | 0% → 100% | -1.75d → none |  |
| 26 | Review comments and compile final report | 2019-02-19 10:00 A | 2019-02-20 10:00 A |  | 0% → 100% | -1.75d → none |  |
| 27 | Analysis complete | 2019-02-20 10:00 A | 2019-02-20 10:00 A |  | 0% → 100% | -1.75d → none |  |
| 28 | **Design** | 2019-02-20 10:00 A | 2019-03-12 15:00 → 2019-03-13 15:00 (+1d) | 14.5d → 15.5d | 0% → 26% | -1.75d → -2.75d |  |
| 29 | Design begins | 2019-02-20 10:00 A | 2019-02-20 10:00 A |  | 0% → 100% | -1.75d → none |  |
| 30 | Research Findings Evaluation | 2019-02-20 10:00 A | 2019-02-22 12:00 → 2019-02-25 12:00 A (+3d) | 2d → 3d | 0% → 100% | -1.75d → none |  |
| 31 | Design Document | 2019-02-22 13:00 → 2019-02-25 13:00 A (+3d) | 2019-02-26 12:00 → 2019-02-27 12:00 (+1d) |  | 0% → 50% | -1.75d → -2.75d | constraint none → start no earlier than 2019-08-03 08:00 |
| 32 | Proof of Concept | 2019-02-26 13:00 → 2019-02-27 13:00 (+1d) | 2019-03-12 12:00 → 2019-03-13 12:00 (+1d) |  |  | -1.75d → -2.75d |  |
| 33 | Final Design Selection | 2019-03-12 13:00 → 2019-03-13 13:00 (+1d) | 2019-03-12 15:00 → 2019-03-13 15:00 (+1d) |  |  | -1.75d → -2.75d |  |
| 34 | Design complete | 2019-03-12 15:00 → 2019-03-13 15:00 (+1d) | 2019-03-12 15:00 → 2019-03-13 15:00 (+1d) |  |  | -1.75d → -2.75d |  |
| 35 | **Product Development** | 2019-03-12 15:00 → 2019-03-13 15:00 (+1d) | 2019-04-18 10:00 → 2019-04-19 10:00 (+1d) |  |  | -0.62d → -1.62d |  |
| 36 | Product development begins | 2019-03-12 15:00 → 2019-03-13 15:00 (+1d) | 2019-03-12 15:00 → 2019-03-13 15:00 (+1d) |  |  | -0.62d → -1.62d |  |
| 37 | Initial Prototype | 2019-03-12 15:00 → 2019-03-13 15:00 (+1d) | 2019-03-19 16:00 → 2019-03-20 16:00 (+1d) |  |  | -0.62d → -1.62d |  |
| 38 | Internal Testing | 2019-03-19 16:00 → 2019-03-20 16:00 (+1d) | 2019-04-02 16:00 → 2019-04-03 16:00 (+1d) |  |  | -0.62d → -1.62d |  |
| 39 | Raw Materials List | 2019-04-02 16:00 → 2019-04-03 16:00 (+1d) | 2019-04-03 17:00 → 2019-04-04 17:00 (+1d) |  |  | -0.62d → -1.62d |  |
| 40 | Parts Designation | 2019-04-04 08:00 → 2019-04-05 08:00 (+1d) | 2019-04-18 10:00 → 2019-04-19 10:00 (+1d) |  |  | -0.62d → -1.62d |  |
| 41 | Product development complete | 2019-04-18 10:00 → 2019-04-19 10:00 (+1d) | 2019-04-18 10:00 → 2019-04-19 10:00 (+1d) |  |  | -0.62d → -1.62d |  |
| 42 | **Production Planning** | 2019-04-18 10:00 → 2019-04-19 10:00 (+1d) | 2019-05-01 14:00 → 2019-05-02 14:00 (+1d) |  |  | -0.62d → -1.62d |  |
| 43 | Production planning begins | 2019-04-18 10:00 → 2019-04-19 10:00 (+1d) | 2019-04-18 10:00 → 2019-04-19 10:00 (+1d) |  |  | -0.62d → -1.62d |  |
| 44 | High-level Production Plan | 2019-04-18 10:00 → 2019-04-19 10:00 (+1d) | 2019-04-25 11:00 → 2019-04-26 11:00 (+1d) |  |  | -0.62d → -1.62d |  |
| 45 | Resource Planning | 2019-04-25 11:00 → 2019-04-26 11:00 (+1d) | 2019-04-30 11:00 → 2019-05-01 11:00 (+1d) |  |  | -0.62d → -1.62d |  |
| 46 | Quality Control Design | 2019-04-30 11:00 → 2019-05-01 11:00 (+1d) | 2019-05-01 11:00 → 2019-05-02 11:00 (+1d) |  |  | -0.62d → -1.62d |  |
| 47 | Final Production Plan Approval | 2019-05-01 11:00 → 2019-05-02 11:00 (+1d) | 2019-05-01 14:00 → 2019-05-02 14:00 (+1d) |  |  | -0.62d → -1.62d |  |
| 48 | Production planning complete | 2019-05-01 14:00 → 2019-05-02 14:00 (+1d) | 2019-05-01 14:00 → 2019-05-02 14:00 (+1d) |  |  | -0.62d → -1.62d |  |
| 49 | **Marketing** | 2019-05-01 14:00 → 2019-05-02 14:00 (+1d) | 2019-05-24 16:24 → 2019-05-29 15:00 (+5d) | 17.3d → 18.12d |  | 0d → -0.75d |  |
| 50 | Marketing phase begins | 2019-05-01 14:00 → 2019-05-02 14:00 (+1d) | 2019-05-01 14:00 → 2019-05-02 14:00 (+1d) |  |  | 0d → -0.5d |  |
| 51 | Marketing Strategy Development | 2019-05-01 14:00 → 2019-05-02 14:00 (+1d) | 2019-05-02 13:24 → 2019-05-06 11:00 (+4d) | 1.18d → 1.55d |  | 0d → -0.75d |  |
| 52 | Marketing Plan Development and Approval | 2019-05-02 13:24 → 2019-05-06 11:00 (+4d) | 2019-05-03 13:24 → 2019-05-07 11:00 (+4d) |  |  | 0d → -0.75d |  |
| 53 | Marketing Materials | 2019-05-03 13:24 → 2019-05-07 11:00 (+4d) | 2019-05-24 16:24 → 2019-05-29 15:00 (+5d) |  |  | 0d → -0.75d |  |
| 54 | Marketing phase complete | 2019-05-24 16:24 → 2019-05-29 15:00 (+5d) | 2019-05-24 16:24 → 2019-05-29 15:00 (+5d) |  |  | 0d → -0.75d |  |
